# NearFood_Plan_v1.0

Schedule from MS Project, 2012-10-19 to 2012-11-01, A marks actual dates.
Nikmesoft Co., Ltd

## Calendars

- Standard: Mon-Fri 08:00-12:00, 13:00-17:00; Sat-Sun off.

## Resources

| Resource |
| --- |
| Men |
| Tu |
| Vu |
| Lap |
| Linh |
| Team |

## Schedule

| ID | WBS | Task | Type | Duration | Start | Finish | Predecessors | Complete | Remaining | Total slack | Resources | Work | Actual work |
| --- | --- | --- | --- | --- | --- | --- | --- | --- | --- | --- | --- | --- | --- |
| 1 | 1 | **NearFood** |  | 10d | 2012-10-19 A | 2012-11-01 |  | 6% | 9.44d | 0d |  | 144h | 8h |
| 2 | 1.1 | **Prototype** |  | 9d | 2012-10-19 A | 2012-10-31 |  | 6% | 8.47d | 0d |  | 136h | 8h |
| 3 | 1.1.1 | Framework | manual | 1d | 2012-10-19 A | 2012-10-19 A |  | 100% |  |  | Linh | 8h | 8h |
| 4 | 1.1.2 | Common Styles | manual | 1d | 2012-10-22 | 2012-10-22 | 3 |  |  |  | Team | 8h |  |
| 5 | 1.1.3 | **User** |  | 7d | 2012-10-23 | 2012-10-31 |  |  |  | 0d |  | 56h |  |
| 6 | 1.1.3.1 | Welcome | manual | 1d | 2012-10-23 | 2012-10-23 | 4 |  |  |  | Vu | 8h |  |
| 7 | 1.1.3.2 | Register | manual | 1d | 2012-10-24 | 2012-10-24 | 6 |  |  |  | Vu | 8h |  |
| 8 | 1.1.3.3 | Login | manual | 1d | 2012-10-25 | 2012-10-25 | 7 |  |  |  | Vu | 8h |  |
| 9 | 1.1.3.4 | Forgot Password | manual | 1d | 2012-10-26 | 2012-10-26 | 8 |  |  |  | Vu | 8h |  |
| 10 | 1.1.3.5 | Profile | manual | 2d | 2012-10-29 | 2012-10-30 | 9 |  |  |  | Vu | 16h |  |
| 11 | 1.1.3.6 | Change Password | manual | 1d | 2012-10-31 | 2012-10-31 | 10 |  |  |  | Vu | 8h |  |
| 12 | 1.1.4 | Search | manual | 1d | 2012-10-23 | 2012-10-23 | 4 |  |  |  | Men | 8h |  |
| 13 | 1.1.5 | Check In | manual | 1d | 2012-10-23 | 2012-10-23 | 4 |  |  |  | Tu | 8h |  |
| 14 | 1.1.6 | Favorites | manual | 1d | 2012-10-30 | 2012-10-30 | 19 |  |  |  | Lap | 8h |  |
| 15 | 1.1.7 | **Settings** |  | 1d | 2012-10-19 | 2012-10-19 |  |  |  |  |  | 40h |  |
| 16 | 1.1.7.1 | Settings | manual | 2d | 2012-10-23 | 2012-10-24 | 4 |  |  |  | Lap | 16h |  |
| 17 | 1.1.7.2 | Feedback | manual | 1d | 2012-10-25 | 2012-10-25 | 16 |  |  |  | Lap | 8h |  |
| 18 | 1.1.7.3 | Help | manual | 1d | 2012-10-26 | 2012-10-26 | 17 |  |  |  | Lap | 8h |  |
| 19 | 1.1.7.4 | About | manual | 1d | 2012-10-29 | 2012-10-29 | 18 |  |  |  | Lap | 8h |  |
| 20 | 1.2 | Test and fix bugs | manual | 1d | 2012-11-01 | 2012-11-01 | 2 |  |  |  | Team | 8h |  |
